# Simple Project Plan

Schedule from MS Project, 2017-09-25 to 2017-11-30, 4 hours a day, A marks actual dates.

## Calendars

- Apriorit: Mon-Sun 00:00-24:00.

## Resources

| Resource |
| --- |
| DEV1 |
| DEV2 |
| TUTOR |

## Schedule

| ID | WBS | Task | Type | Duration | Start | Finish | Predecessors | Complete | Remaining | Total slack | Free slack | Constraint | Resources | Work | Actual work |
| --- | --- | --- | --- | --- | --- | --- | --- | --- | --- | --- | --- | --- | --- | --- | --- |
| 1 | 1 | **Preparation Stage** |  | 4d | 2017-09-25 18:00 A | 2017-09-29 14:00 |  | 57% | 1.72d | 1d |  |  |  | 29h | 12h |
| 2 | 1.1 | Research |  | 5d | 2017-09-25 18:00 A | 2017-09-28 12:00 |  | 60% | 2d | 0d |  | must start on 2017-09-25 18:00 | DEV2; DEV1 | 28h | 12h |
| 3 | 1.2 | Consulting with the tutor |  | 0.25d | 2017-09-29 13:00 | 2017-09-29 14:00 | 2 |  |  | 1d |  | start no earlier than 2017-09-29 12:00 | DEV2 [33%]; TUTOR [33%]; DEV1 [33%] | 1h |  |
| 4 | 2 | **Design Stage** |  | 7.5d | 2017-09-30 18:00 | 2017-10-07 20:00 |  |  |  | 0d |  |  |  | 81h |  |
| 5 | 2.1 | Architecture Design |  | 9d | 2017-09-30 18:00 | 2017-10-05 12:00 | 3 |  |  | 0d |  | must start on 2017-09-30 18:00 | DEV2; DEV1 | 72h |  |
| 6 | 2.2 | Architecture Review |  | 0.25d | 2017-10-06 13:00 | 2017-10-06 14:00 | 5 |  |  | 1d |  | start no earlier than 2017-10-06 12:00 | TUTOR | 1h |  |
| 7 | 2.3 | Architecture Refactoring |  | 1d | 2017-10-07 13:00 | 2017-10-07 20:00 | 6 |  |  | 0d |  | must finish on 2017-10-07 20:00 | DEV1; DEV2 | 8h |  |
| 8 | 3 | **Planning Stage** |  | 0d | 2017-10-08 08:00 | 2017-10-08 12:00 |  |  |  | 0d |  |  |  | 4h |  |
| 9 | 3.1 | Segregation of duties |  | 0.25d | 2017-10-08 08:00 | 2017-10-08 09:00 | 7 |  |  | 0d |  | start no later than 2017-10-08 12:00 | DEV1 [50%]; DEV2 [50%] | 1h |  |
| 10 | 3.2 | Project map creation |  | 0.75d | 2017-10-08 09:00 | 2017-10-08 12:00 | 9 |  |  | 0d |  | finish no later than 2017-10-08 20:00 | DEV1 [50%]; DEV2 [50%] | 3h |  |
| 11 | 4 | **Implementation Stage** |  | 26d | 2017-10-09 18:00 | 2017-11-04 10:00 |  |  |  | 0d |  |  |  | 780h |  |
| 12 | 4.1 | **Parser Library** |  | 24d | 2017-10-09 18:00 | 2017-11-02 15:00 |  |  |  | 0d |  |  |  | 378h |  |
| 13 | 4.1.1 | **Parser Library Implementation** |  | 14d | 2017-10-09 18:00 | 2017-10-23 17:00 |  |  |  | 0d |  |  |  | 224h |  |
| 14 | 4.1.1.1 | Cache Files Parser Impl. |  | 14d | 2017-10-09 18:00 | 2017-10-16 17:00 | 10 |  |  | 0d |  | must start on 2017-10-09 18:00 | DEV1; DEV2 | 112h |  |
| 15 | 4.1.1.2 | SQLite DB Parser Impl. |  | 14d | 2017-10-17 08:00 | 2017-10-23 17:00 | 14 |  |  | 1d |  |  | DEV1; DEV2 | 112h |  |
| 16 | 4.1.2 | Unit Tests |  | 8d | 2017-10-24 08:00 | 2017-10-27 17:00 | 13 |  |  | 1d |  | finish no earlier than 2017-10-21 22:00 | DEV1; DEV2 | 64h |  |
| 17 | 4.1.3 | Dev Testing and Bugfix |  | 8d | 2017-10-28 08:00 | 2017-10-31 17:00 | 16 |  |  | 1d |  |  | DEV1; DEV2 | 64h |  |
| 18 | 4.1.4 | Code Review |  | 0.5d | 2017-11-01 08:00 | 2017-11-01 10:00 | 17 |  |  | 1d | 0d |  | TUTOR | 2h |  |
| 19 | 4.1.5 | Refactoring after Code Review |  | 2d | 2017-11-01 10:00 | 2017-11-02 10:00 | 18 |  |  | 1d | 0d |  | DEV1; DEV2 | 16h |  |
| 20 | 4.1.6 | Risks of problems with cache files |  | 0.5d | 2017-11-02 10:00 | 2017-11-02 12:00 | 19 |  |  | 2d | 0d |  | DEV1; DEV2 | 4h |  |
| 21 | 4.1.7 | Risks of problems with databases |  | 0.5d | 2017-11-02 13:00 | 2017-11-02 15:00 | 20 |  |  | 2d | 0d |  | DEV1; DEV2 | 4h |  |
| 22 | 4.2 | **GUI** |  | 24d | 2017-10-09 18:00 | 2017-11-02 15:00 |  |  |  | 0d |  |  |  | 378h |  |
| 23 | 4.2.1 | **GUI Implementation** |  | 14d | 2017-10-09 18:00 | 2017-10-23 17:00 |  |  |  | 0d |  |  |  | 224h |  |
| 24 | 4.2.1.1 | UI Impl. |  | 10d | 2017-10-09 18:00 | 2017-10-14 17:00 | 10 |  |  | 0d |  | must start on 2017-10-09 18:00 | DEV2; DEV1 | 80h |  |
| 25 | 4.2.1.2 | Data search feature Impl. |  | 10d | 2017-10-15 08:00 | 2017-10-19 17:00 | 24 |  |  | 1d |  |  | DEV2; DEV1 | 80h |  |
| 26 | 4.2.1.3 | Export to file feature Impl. |  | 8d | 2017-10-20 08:00 | 2017-10-23 17:00 | 25 |  |  | 1d |  |  | DEV2; DEV1 | 64h |  |
| 27 | 4.2.2 | Unit Tests |  | 8d | 2017-10-24 08:00 | 2017-10-27 17:00 | 23 |  |  | 1d |  |  | DEV2; DEV1 | 64h |  |
| 28 | 4.2.3 | Dev Testing and Bugfix |  | 8d | 2017-10-28 08:00 | 2017-10-31 17:00 | 27 |  |  | 1d |  |  | DEV2; DEV1 | 64h |  |
| 29 | 4.2.4 | Code Review |  | 0.5d | 2017-11-01 08:00 | 2017-11-01 10:00 | 28 |  |  | 1d | 0d |  | TUTOR | 2h |  |
| 30 | 4.2.5 | Refactoring after Code Review |  | 2d | 2017-11-01 10:00 | 2017-11-02 10:00 | 29 |  |  | 1d | 0d |  | DEV2; DEV1 | 16h |  |
| 31 | 4.2.6 | Risks of problems with data search |  | 0.5d | 2017-11-02 10:00 | 2017-11-02 12:00 | 30 |  |  | 2d | 0d |  | DEV2; DEV1 | 4h |  |
| 32 | 4.2.7 | Risks of problems with data export |  | 0.5d | 2017-11-02 13:00 | 2017-11-02 15:00 | 31 |  |  | 2d | 0d |  | DEV2; DEV1 | 4h |  |
| 33 | 4.3 | Module Integration |  | 0.5d | 2017-11-02 15:00 | 2017-11-02 17:00 | 32, 21 |  |  | 2d | 1d |  | DEV1; DEV2 | 4h |  |
| 34 | 4.4 | Integration Testing and Bugfix |  | 0.5d | 2017-11-03 08:00 | 2017-11-03 10:00 | 33 |  |  | 1d | 0d |  | DEV1; DEV2 | 4h |  |
| 35 | 4.5 | VERSION FOR TESTING | milestone | 0d | 2017-11-03 10:00 | 2017-11-03 10:00 | 34 |  |  | 2d | 0d |  |  |  |  |
| 36 | 4.6 | Dev Documentation |  | 2d | 2017-11-03 10:00 | 2017-11-04 10:00 | 35 |  |  | 1d | 0d |  | DEV1; DEV2 | 16h |  |

Notes:
- 35: Full program ready for testing

| ID | WBS | Task | Duration | Start | Finish | Predecessors | Total slack | Free slack | Constraint | Resources | Work |
| --- | --- | --- | --- | --- | --- | --- | --- | --- | --- | --- | --- |
| 37 | 5 | **Quality Assurance Stage** | 14d | 2017-11-04 10:00 | 2017-11-17 22:00 |  | 1d |  |  |  | 92h |
| 38 | 5.1 | **Parser Library** | 4d | 2017-11-04 10:00 | 2017-11-08 10:00 |  | 21d |  |  |  | 40h |
| 39 | 5.1.1 | **Testing** | 2d | 2017-11-04 10:00 | 2017-11-06 10:00 |  | 21d | 0d |  |  | 8h |
| 40 | 5.1.1.1 | Cache Files Parser | 2d | 2017-11-04 10:00 | 2017-11-05 10:00 | 36 | 21d | 0d |  | DEV1 [50%] | 4h |
| 41 | 5.1.1.2 | SQLite DB Parser | 2d | 2017-11-05 10:00 | 2017-11-06 10:00 | 40 | 21d |  |  | DEV1 [50%] | 4h |
| 42 | 5.1.2 | Bugfix after Testing | 2d | 2017-11-06 10:00 | 2017-11-07 10:00 | 39 | 21d | 0d |  | DEV1; DEV2 | 16h |
| 43 | 5.1.3 | Testing (due to problems with cache files) | 0.5d | 2017-11-07 10:00 | 2017-11-07 12:00 | 42 | 21d | 0d |  | DEV1; DEV2 | 4h |
| 44 | 5.1.4 | Testing (due to problems with databases) | 0.5d | 2017-11-07 13:00 | 2017-11-07 15:00 | 43 | 21d | 0d |  | DEV1; DEV2 | 4h |
| 45 | 5.1.5 | Regression Testing | 1d | 2017-11-07 15:00 | 2017-11-08 10:00 | 44 | 21d | 0d |  | DEV1; DEV2 | 8h |
| 46 | 5.2 | **GUI** | 4d | 2017-11-04 10:00 | 2017-11-08 10:00 |  | 21d |  |  |  | 40h |
| 47 | 5.2.1 | **Testing** | 2d | 2017-11-04 10:00 | 2017-11-06 10:00 |  | 21d | 0d |  |  | 8h |
| 48 | 5.2.1.1 | UI | 1d | 2017-11-04 10:00 | 2017-11-04 15:00 | 36 | 21d | 0d |  | DEV2 [50%] | 2h |
| 49 | 5.2.1.2 | Data search | 2d | 2017-11-04 15:00 | 2017-11-05 15:00 | 48 | 21d | 0d |  | DEV2 [50%] | 4h |
| 50 | 5.2.1.3 | Export to file | 1d | 2017-11-05 15:00 | 2017-11-06 10:00 | 49 | 21d |  |  | DEV2 [50%] | 2h |
| 51 | 5.2.2 | Bugfix after Testing | 2d | 2017-11-06 10:00 | 2017-11-07 10:00 | 47 | 21d | 0d |  | DEV2; DEV1 | 16h |
| 52 | 5.2.3 | Testing (due to problems with data search) | 0.5d | 2017-11-07 10:00 | 2017-11-07 12:00 | 51 | 21d | 0d |  | DEV2; DEV1 | 4h |
| 53 | 5.2.4 | Testing (due to problems with data export) | 0.5d | 2017-11-07 13:00 | 2017-11-07 15:00 | 52 | 21d | 0d |  | DEV2; DEV1 | 4h |
| 54 | 5.2.5 | Regression Testing | 1d | 2017-11-07 15:00 | 2017-11-08 10:00 | 53 | 21d | 0d |  | DEV2; DEV1 | 8h |
| 55 | 5.3 | Integration Testing | 0.5d | 2017-11-08 10:00 | 2017-11-08 12:00 | 54, 45 | 21d | 0d |  | DEV1; DEV2 | 4h |
| 56 | 5.4 | Functional Testing | 1d | 2017-11-08 13:00 | 2017-11-08 17:00 | 55 | 21d |  |  | DEV1; DEV2 | 8h |
| 57 | 5.5 | Quality Assurance Stage 1 | 7d | 2017-11-04 18:00 | 2017-11-10 22:00 | 36 | 1d | 0d | start no earlier than 2017-11-04 12:00 |  |  |
| 58 | 5.6 | Quality Assurance Stage 2 | 7d | 2017-11-11 18:00 | 2017-11-17 22:00 | 57 | 1d | 0d | start no earlier than 2017-11-11 12:00 |  |  |
| 59 | 6 | **Release Stage** | 2d | 2017-11-18 13:00 | 2017-11-20 17:00 |  | 0d |  | start no earlier than 2017-11-18 12:00 |  | 16h |
| 60 | 6.1 | Pre-sending Testing | 1d | 2017-11-18 13:00 | 2017-11-18 17:00 | 58 | 1d |  |  | DEV1; DEV2 | 8h |
| 61 | 6.2 | Product Delivery | 0.5d | 2017-11-19 08:00 | 2017-11-19 10:00 | 60 | 1d |  |  | DEV1; DEV2 | 4h |
| 62 | 6.3 | Product Verification | 1d | 2017-11-20 13:00 | 2017-11-20 17:00 | 61 | 0d |  | must finish on 2017-11-20 17:00 | DEV1 [50%]; DEV2 [50%] | 4h |

Notes:
- 57: First iteration of QA
- 58: Second iteration of QA
- 62: Project is complete

| ID | WBS | Task | Duration | Start | Finish | Predecessors | Total slack | Constraint | Resources | Work |
| --- | --- | --- | --- | --- | --- | --- | --- | --- | --- | --- |
| 63 | 7 | **Support Stage** | 9d | 2017-11-21 08:00 | 2017-11-30 10:00 |  | 0d |  |  | 140h |
| 64 | 7.1 | Feedback Acqusition | 2d | 2017-11-21 08:00 | 2017-11-21 17:00 | 62 | 0d | start no earlier than 2017-09-21 12:00 | TUTOR | 8h |
| 65 | 7.2 | Bugfix/Improvement | 14d | 2017-11-22 08:00 | 2017-11-28 17:00 | 64 | 0d |  | DEV1; DEV2 | 112h |
| 66 | 7.3 | Regression Testing | 2d | 2017-11-29 08:00 | 2017-11-29 17:00 | 65 | 0d |  | DEV1; DEV2 | 16h |
| 67 | 7.4 | Update Delivery | 0.5d | 2017-11-30 08:00 | 2017-11-30 10:00 | 66 | 0d |  | DEV1; DEV2 | 4h |

Notes:
- 63: This stage isn't necessary
